# Cronograma LOGIN Marinha

Schedule from MS Project, 2015-02-12 to 2015-04-28, A marks actual dates.

## Calendars

- Padrão: Mon-Fri 09:00-12:00, 13:00-18:00; Sat-Sun off.

## Resources

| Resource |
| --- |
| Marcelo |
| Rogério |
| Rodrigo |
| Eduardo |
| Emanuel |
| Lucas |
| Khelmo |
| PMO |
| Ricardo |
| Fontes |
| Marcieli |
| William |
| 8 |

## Schedule

| ID | WBS | Task | Type | Duration | Start | Finish | Predecessors | Complete | Resources | Work | Actual work |
| --- | --- | --- | --- | --- | --- | --- | --- | --- | --- | --- | --- |
| 1 | 1 | **Projeto Autenticação DAbM** |  | 53.25d | 2015-02-12 10:00 A | 2015-04-28 12:00 A |  | 100% |  | 1045h | 1045h |
| 2 | 1.1 | **SPRINT 01** |  | 53.25d | 2015-02-12 10:00 A | 2015-04-28 12:00 A |  | 100% |  | 1045h | 1045h |
| 3 | 1.1.1 | INÍCIO | milestone | 0d | 2015-03-03 16:00 A | 2015-03-03 16:00 A |  | 100% |  |  |  |
| 4 | 1.1.2 | **Artefatos globais** |  | 53.25d | 2015-02-12 10:00 A | 2015-04-28 12:00 A |  | 100% |  | 555h | 555h |
| 5 | 1.1.2.1 | **Artefatos de Gerenciamento** |  | 15.62d | 2015-02-12 10:00 A | 2015-03-05 16:00 A |  | 100% |  | 46h | 46h |
| 6 | 1.1.2.1.1 | **EAP** |  | 1.5d | 2015-03-03 16:00 A | 2015-03-05 11:00 A |  | 100% |  | 10h | 10h |
| 7 | 1.1.2.1.1.1 | Elaborar |  | 6h | 2015-03-03 16:00 A | 2015-03-04 14:00 A | 3 | 100% | Rogério | 6h | 6h |
| 8 | 1.1.2.1.1.2 | Revisar |  | 2h | 2015-03-04 14:00 A | 2015-03-04 18:00 A | 7 | 100% | PMO | 2h | 2h |
| 9 | 1.1.2.1.1.3 | Ajustes após revisão |  | 2h | 2015-03-05 09:00 A | 2015-03-05 11:00 A | 8 | 100% | Rogério | 2h | 2h |
| 10 | 1.1.2.1.2 | **Cronograma** |  | 15.62d | 2015-02-12 10:00 A | 2015-03-05 16:00 A |  | 100% |  | 36h | 36h |
| 11 | 1.1.2.1.2.1 | Elaborar |  | 6h | 2015-03-05 09:00 A | 2015-03-05 16:00 A | 8 | 100% | Rogério | 6h | 6h |
| 12 | 1.1.2.1.2.2 | Alocação da equipe |  | 2h | 2015-02-12 10:00 A | 2015-02-12 12:00 A |  | 100% | Rogério; Rodrigo | 4h | 4h |
| 13 | 1.1.2.1.2.3 | Revisar |  | 1h | 2015-03-05 14:00 A | 2015-03-05 15:00 A | 11 | 100% | PMO | 1h | 1h |
| 14 | 1.1.2.1.2.4 | Ajustes após revisão |  | 1h | 2015-03-05 15:00 A | 2015-03-05 16:00 A | 13 | 100% | Rogério | 1h | 1h |
| 15 | 1.1.2.1.2.5 | Planejamento da sprint |  | 4h | 2015-03-02 15:00 A | 2015-03-03 10:00 A | 20, 35 | 100% | Rogério; Eduardo; Emanuel; Lucas | 16h | 16h |
| 16 | 1.1.2.1.2.6 | Montagem kamban |  | 1h | 2015-03-03 10:00 A | 2015-03-03 11:00 A | 15 | 100% | Rogério; Eduardo; Emanuel; Lucas | 4h | 4h |
| 17 | 1.1.2.1.2.7 | Revisão dos artefatos de gerenciamento |  | 4h | 2015-03-03 11:00 A | 2015-03-03 16:00 A | 16 | 100% | PMO | 4h | 4h |
| 18 | 1.1.2.2 | **Artefatos Análise** |  | 53d | 2015-02-12 12:00 A | 2015-04-28 12:00 A |  | 100% |  | 509h | 509h |
| 19 | 1.1.2.2.1 | **Documento de requisitos** |  | 37d | 2015-02-12 12:00 A | 2015-04-06 12:00 A |  | 100% |  | 368h | 368h |
| 20 | 1.1.2.2.1.1 | Reunião preliminar de requisitos |  | 2h | 2015-02-12 13:00 A | 2015-02-12 15:00 A | 12 | 100% | Rogério; Rodrigo; Eduardo; Emanuel; Lucas; Khelmo | 12h | 12h |
| 21 | 1.1.2.2.1.2 | Entrevista com requisitante |  | 14h | 2015-03-03 16:00 A | 2015-03-05 14:00 A | 3 | 100% | Rogério; Eduardo; Emanuel; Lucas; Rodrigo | 70h | 70h |
| 22 | 1.1.2.2.1.3 | Elaborar |  | 8h | 2015-03-05 14:00 A | 2015-03-06 14:00 A | 21 | 100% | Eduardo; Emanuel | 16h | 16h |
| 23 | 1.1.2.2.1.4 | Revisar |  | 2h | 2015-03-06 14:00 A | 2015-03-06 16:00 A | 22 | 100% | Emanuel | 2h | 2h |
| 24 | 1.1.2.2.1.5 | Ajustes após revisão |  | 3h | 2015-03-06 16:00 A | 2015-03-09 10:00 A | 23 | 100% | Eduardo; Emanuel | 6h | 6h |
| 25 | 1.1.2.2.1.6 | Template para gerar documentação de requisitos |  | 2h | 2015-04-02 11:00 A | 2015-04-02 14:00 A | 151 | 100% | Eduardo | 2h | 2h |
| 26 | 1.1.2.2.1.7 | Renomear elemento organizacional para organização militar |  | 1h | 2015-04-02 14:00 A | 2015-04-02 15:00 A | 25 | 100% | Emanuel | 1h | 1h |
| 27 | 1.1.2.2.1.8 | Adequações aos novos requisitos |  | 4h | 2015-04-03 09:00 A | 2015-04-03 14:00 A | 52 | 100% | Eduardo; Emanuel; Lucas | 12h | 12h |
| 28 | 1.1.2.2.1.9 | Análise do modelo de dados (Singra) |  | 2h | 2015-04-03 14:00 A | 2015-04-03 16:00 A | 27 | 100% | Emanuel | 2h | 2h |
| 29 | 1.1.2.2.1.10 | Atualização de modelo de dados |  | 2h | 2015-04-03 16:00 A | 2015-04-03 18:00 A | 28 | 100% | Emanuel; Lucas | 2h | 2h |
| 30 | 1.1.2.2.1.11 | Análise de documento de resposta (Requisitos) |  | 2h | 2015-04-06 09:00 A | 2015-04-06 11:00 A | 29 | 100% | Eduardo | 2h | 2h |
| 31 | 1.1.2.2.1.12 | Renomear fronteira da aplicação |  | 1h | 2015-04-06 11:00 A | 2015-04-06 12:00 A | 30 | 100% | Emanuel | 1h | 1h |

| ID | WBS | Task | Duration | Start | Finish | Predecessors | Complete | Resources | Work | Actual work |
| --- | --- | --- | --- | --- | --- | --- | --- | --- | --- | --- |
| 32 | 1.1.2.2.1.13 | **Preparação do Projeto** | 12.5d | 2015-02-12 15:00 A | 2015-03-03 10:00 A |  | 100% |  | 206h | 206h |
| 33 | 1.1.2.2.1.13.1 | Pesquisa de tecnologia | 80h | 2015-02-12 15:00 A | 2015-02-26 15:00 A | 20 | 100% | Eduardo; Emanuel; Rodrigo | 160h | 160h |
| 34 | 1.1.2.2.1.13.2 | Definição de tecnologia | 13h | 2015-02-26 15:00 A | 2015-03-02 11:00 A | 33 | 100% | Eduardo; Emanuel; Rodrigo | 39h | 39h |
| 35 | 1.1.2.2.1.13.3 | Realizar contagem indicativa do projeto | 3h | 2015-03-02 11:00 A | 2015-03-02 15:00 A | 34 | 100% | Eduardo | 3h | 3h |
| 36 | 1.1.2.2.1.13.4 | Revisão da planilha de contagem | 4h | 2015-03-02 15:00 A | 2015-03-03 10:00 A | 35 | 100% | Marcieli | 4h | 4h |
| 37 | 1.1.2.2.1.14 | **Preparação da Infraestrutura** | 3.25d | 2015-02-12 12:00 A | 2015-02-17 15:00 A |  | 100% |  | 34h | 34h |
| 38 | 1.1.2.2.1.14.1 | Montagem de arquitetura | 3d | 2015-02-12 15:00 A | 2015-02-17 15:00 A | 20 | 100% | Rodrigo | 24h | 24h |
| 39 | 1.1.2.2.1.14.2 | Criar repositório | 3h | 2015-02-12 12:00 A | 2015-02-12 16:00 A | 12 | 100% | Marcelo; William | 3h | 3h |
| 40 | 1.1.2.2.1.14.3 | Preparar base de dados do EAR | 3h | 2015-02-12 16:00 A | 2015-02-13 10:00 A | 39 | 100% | Marcelo; William | 3h | 3h |
| 41 | 1.1.2.2.1.14.4 | Fazer deploy do ambiente de desenvolvimento | 2h | 2015-02-13 10:00 A | 2015-02-13 12:00 A | 40 | 100% | Marcelo; William | 4h | 4h |
| 42 | 1.1.2.2.2 | **DER** | 1.5d | 2015-03-05 14:00 A | 2015-03-06 18:00 A |  | 100% |  | 16h | 16h |
| 43 | 1.1.2.2.2.1 | Elaborar | 5h | 2015-03-05 14:00 A | 2015-03-06 15:00 A | 21 | 100% | Emanuel; Eduardo | 10h | 10h |
| 44 | 1.1.2.2.2.2 | Revisar | 1h | 2015-03-06 15:00 A | 2015-03-06 16:00 A | 43 | 100% | Eduardo | 1h | 1h |
| 45 | 1.1.2.2.2.3 | Ajustes após revisão | 2h | 2015-03-06 16:00 A | 2015-03-06 18:00 A | 44 | 100% | Eduardo; Emanuel | 4h | 4h |
| 46 | 1.1.2.2.2.4 | Exportar para PDF | 1h | 2015-03-06 16:00 A | 2015-03-06 17:00 A | 44 | 100% | Emanuel | 1h | 1h |
| 47 | 1.1.2.2.3 | **Diagrama de Classes** | 13.75d | 2015-03-27 11:00 A | 2015-04-15 18:00 A |  | 100% |  | 73h | 73h |
| 48 | 1.1.2.2.3.1 | Elaborar | 13h | 2015-03-27 11:00 A | 2015-03-30 17:00 A | 80, 97, 117 | 100% | Eduardo; Emanuel; Rodrigo | 39h | 39h |
| 49 | 1.1.2.2.3.2 | Revisar | 5h | 2015-03-30 17:00 A | 2015-04-07 15:00 A | 48 | 100% | Eduardo; Emanuel; Rodrigo | 15h | 15h |
| 50 | 1.1.2.2.3.3 | Ajustes após revisão | 3h | 2015-04-07 15:00 A | 2015-04-15 14:00 A | 49 | 100% | Eduardo; Emanuel | 6h | 6h |
| 51 | 1.1.2.2.3.4 | Estudo da estrutura de aplicação | 4h | 2015-04-15 14:00 A | 2015-04-15 18:00 A | 50 | 100% | Ricardo | 4h | 4h |
| 52 | 1.1.2.2.3.5 | Atualização de diagrama de classes | 3h | 2015-04-02 15:00 A | 2015-04-02 18:00 A | 26 | 100% | Eduardo; Emanuel; Rodrigo | 9h | 9h |
| 53 | 1.1.2.2.4 | **Matriz de Rastreabilidade** | 1.25d | 2015-04-16 09:00 A | 2015-04-17 11:00 A |  | 100% |  | 14h | 14h |
| 54 | 1.1.2.2.4.1 | Elaborar | 4h | 2015-04-16 09:00 A | 2015-04-16 14:00 A | 51 | 100% | Emanuel; Eduardo | 7h | 7h |
| 55 | 1.1.2.2.4.2 | Revisar | 2h | 2015-04-16 14:00 A | 2015-04-16 18:00 A | 54 | 100% | Eduardo; Emanuel | 3h | 3h |
| 56 | 1.1.2.2.4.3 | Ajustes após revisão | 2h | 2015-04-17 09:00 A | 2015-04-17 11:00 A | 55 | 100% | Eduardo; Emanuel | 4h | 4h |

| ID | WBS | Task | Duration | Start | Finish | Predecessors | Complete | Resources | Work | Actual work |
| --- | --- | --- | --- | --- | --- | --- | --- | --- | --- | --- |
| 57 | 1.1.2.2.5 | **Planilha de Contagem APF** | 12.25d | 2015-04-02 11:00 A | 2015-04-20 14:00 A |  | 100% |  | 22h | 22h |
| 58 | 1.1.2.2.5.1 | Elaborar | 8h | 2015-04-02 11:00 A | 2015-04-10 12:00 A | 151 | 100% | Eduardo; Emanuel | 16h | 16h |
| 59 | 1.1.2.2.5.2 | Revisar | 2h | 2015-04-10 13:00 A | 2015-04-20 11:00 A | 58 | 100% | Lucas | 2h | 2h |
| 60 | 1.1.2.2.5.3 | Ajustes após revisão | 2h | 2015-04-20 11:00 A | 2015-04-20 14:00 A | 59 | 100% | Eduardo; Emanuel | 4h | 4h |
| 61 | 1.1.2.2.6 | **Documento Aux. Contagem** | 12d | 2015-04-10 13:00 A | 2015-04-28 12:00 A |  | 100% |  | 16h | 16h |
| 62 | 1.1.2.2.6.1 | Elaborar | 5h | 2015-04-10 13:00 A | 2015-04-20 11:00 A | 58 | 100% | Eduardo; Emanuel | 10h | 10h |
| 63 | 1.1.2.2.6.2 | Revisar | 2h | 2015-04-20 11:00 A | 2015-04-28 10:00 A | 59 | 100% | Lucas | 2h | 2h |
| 64 | 1.1.2.2.6.3 | Ajustes após revisão | 2h | 2015-04-28 10:00 A | 2015-04-28 12:00 A | 63 | 100% | Eduardo; Emanuel | 4h | 4h |
| 65 | 1.1.3 | **USUÁRIO** | 19.38d | 2015-03-03 16:00 A | 2015-03-31 10:00 A |  | 100% |  | 138h | 138h |
| 66 | 1.1.3.1 | **Protóripos de tela** | 5.38d | 2015-03-06 17:00 A | 2015-03-16 11:00 A |  | 100% |  | 59h | 59h |
| 67 | 1.1.3.1.1 | Elaborar | 13h | 2015-03-06 17:00 A | 2015-03-10 14:00 A | 46, 23 | 100% | Emanuel; Eduardo; Ricardo | 33h | 33h |
| 68 | 1.1.3.1.2 | Revisar | 3d | 2015-03-10 14:00 A | 2015-03-13 18:00 A | 67 | 100% | Eduardo | 24h | 24h |
| 69 | 1.1.3.1.3 | Ajustes após revisão | 2h | 2015-03-13 18:00 A | 2015-03-16 11:00 A | 68 | 100% | Emanuel; Ricardo | 2h | 2h |
| 70 | 1.1.3.2 | **Visual Design** | 6d | 2015-03-03 16:00 A | 2015-03-11 16:00 A |  | 100% |  | 31h | 31h |
| 71 | 1.1.3.2.1 | Elaborar | 15h | 2015-03-03 16:00 A | 2015-03-05 15:00 A | 3 | 100% | Ricardo; Eduardo | 25h | 25h |
| 72 | 1.1.3.2.2 | Revisar | 4h | 2015-03-05 15:00 A | 2015-03-09 15:00 A | 71 | 100% | Ricardo | 4h | 4h |
| 73 | 1.1.3.2.3 | Ajustes após revisão | 2h | 2015-03-09 15:00 A | 2015-03-11 16:00 A | 72 | 100% | Ricardo | 2h | 2h |
| 74 | 1.1.3.3 | **Diagrama de casos de uso** | 0.75d | 2015-03-18 17:00 A | 2015-03-19 15:00 A |  | 100% |  | 8h | 8h |
| 75 | 1.1.3.3.1 | Elaborar | 3h | 2015-03-18 17:00 A | 2015-03-19 11:00 A | 103 | 100% | Eduardo; Emanuel | 5h | 5h |
| 76 | 1.1.3.3.2 | Revisar | 1h | 2015-03-19 11:00 A | 2015-03-19 12:00 A | 75 | 100% | Emanuel | 1h | 1h |
| 77 | 1.1.3.3.3 | Ajustes após revisão | 2h | 2015-03-19 13:00 A | 2015-03-19 15:00 A | 76 | 100% | Eduardo | 2h | 2h |
| 78 | 1.1.3.4 | **Casos de uso** | 7.75d | 2015-03-19 13:00 A | 2015-03-31 10:00 A |  | 100% |  | 40h | 40h |
| 79 | 1.1.3.4.1 | Especificar | 16h | 2015-03-19 13:00 A | 2015-03-23 12:00 A | 76 | 100% | Eduardo; Emanuel | 30h | 30h |
| 80 | 1.1.3.4.2 | Revisar | 5h | 2015-03-23 13:00 A | 2015-03-26 10:00 A | 79 | 100% | Emanuel | 5h | 5h |
| 81 | 1.1.3.4.3 | Ajustes após revisão | 5h | 2015-03-26 10:00 A | 2015-03-31 10:00 A | 80 | 100% | Eduardo | 5h | 5h |

| ID | WBS | Task | Duration | Start | Finish | Predecessors | Complete | Resources | Work | Actual work |
| --- | --- | --- | --- | --- | --- | --- | --- | --- | --- | --- |
| 82 | 1.1.4 | **APLICATIVOS** | 14d | 2015-03-06 17:00 A | 2015-03-26 17:00 A |  | 100% |  | 100h | 100h |
| 83 | 1.1.4.1 | **Protóripos de tela** | 2.62d | 2015-03-06 17:00 A | 2015-03-11 14:00 A |  | 100% |  | 31h | 31h |
| 84 | 1.1.4.1.1 | Elaborar | 13h | 2015-03-06 17:00 A | 2015-03-10 14:00 A | 46, 23 | 100% | Eduardo; Emanuel | 23h | 23h |
| 85 | 1.1.4.1.2 | Revisar | 4h | 2015-03-10 14:00 A | 2015-03-10 18:00 A | 84 | 100% | Ricardo | 4h | 4h |
| 86 | 1.1.4.1.3 | Ajustes após revisão | 4h | 2015-03-11 09:00 A | 2015-03-11 14:00 A | 85 | 100% | Eduardo; Emanuel | 4h | 4h |
| 87 | 1.1.4.2 | **Visual Design consulta e cadastro de aplicação** | 6.25d | 2015-03-09 15:00 A | 2015-03-17 17:00 A |  | 100% |  | 25h | 25h |
| 88 | 1.1.4.2.1 | Elaborar | 15h | 2015-03-09 15:00 A | 2015-03-11 14:00 A | 72 | 100% | Ricardo | 15h | 15h |
| 89 | 1.1.4.2.2 | Revisar | 4h | 2015-03-11 14:00 A | 2015-03-11 18:00 A | 88 | 100% | Emanuel | 4h | 4h |
| 90 | 1.1.4.2.3 | Ajustes após revisão | 6h | 2015-03-12 09:00 A | 2015-03-17 17:00 A | 89 | 100% | Ricardo | 6h | 6h |
| 91 | 1.1.4.3 | **Diagrama de casos de uso** | 0.75d | 2015-03-17 15:00 A | 2015-03-18 12:00 A |  | 100% |  | 8h | 8h |
| 92 | 1.1.4.3.1 | Elaborar | 3h | 2015-03-17 15:00 A | 2015-03-17 18:00 A | 104 | 100% | Emanuel; Eduardo | 5h | 5h |
| 93 | 1.1.4.3.2 | Revisar | 1h | 2015-03-18 09:00 A | 2015-03-18 10:00 A | 92 | 100% | Eduardo | 1h | 1h |
| 94 | 1.1.4.3.3 | Ajustes após revisão | 2h | 2015-03-18 10:00 A | 2015-03-18 12:00 A | 93 | 100% | Emanuel | 2h | 2h |
| 95 | 1.1.4.4 | **Casos de uso** | 6.75d | 2015-03-18 10:00 A | 2015-03-26 17:00 A |  | 100% |  | 36h | 36h |
| 96 | 1.1.4.4.1 | Especificar | 15h | 2015-03-18 10:00 A | 2015-03-19 18:00 A | 93 | 100% | Emanuel; Eduardo | 28h | 28h |
| 97 | 1.1.4.4.2 | Revisar | 4h | 2015-03-20 09:00 A | 2015-03-24 12:00 A | 96 | 100% | Eduardo | 4h | 4h |
| 98 | 1.1.4.4.3 | Ajustes após revisão | 4h | 2015-03-24 13:00 A | 2015-03-26 17:00 A | 97 | 100% | Emanuel | 4h | 4h |
| 99 | 1.1.5 | **LOGIN** | 12d | 2015-03-11 14:00 A | 2015-03-27 14:00 A |  | 100% |  | 71h | 71h |
| 100 | 1.1.5.1 | **Protóripos de tela** | 5.38d | 2015-03-11 14:00 A | 2015-03-18 17:00 A |  | 100% |  | 13h | 13h |
| 101 | 1.1.5.1.1 | Elaborar protótipo de login | 2h | 2015-03-16 09:00 A | 2015-03-18 16:00 A | 46, 23, 68 | 100% | Emanuel; Ricardo | 4h | 4h |
| 102 | 1.1.5.1.2 | Elaborar protótipo recuperar senha | 3h | 2015-03-11 14:00 A | 2015-03-17 14:00 A | 46, 23, 83 | 100% | Eduardo; Ricardo | 3h | 3h |
| 103 | 1.1.5.1.3 | Revisar protótipo de login | 1h | 2015-03-18 16:00 A | 2015-03-18 17:00 A | 101 | 100% | Eduardo | 1h | 1h |
| 104 | 1.1.5.1.4 | Revisar protótipo recuperar senha | 1h | 2015-03-17 14:00 A | 2015-03-17 15:00 A | 102 | 100% | Emanuel | 1h | 1h |
| 105 | 1.1.5.1.5 | Ajustes após revisão | 2h | 2015-03-17 15:00 A | 2015-03-17 17:00 A | 104 | 100% | Eduardo; Emanuel | 4h | 4h |

| ID | WBS | Task | Duration | Start | Finish | Predecessors | Complete | Resources | Work | Actual work |
| --- | --- | --- | --- | --- | --- | --- | --- | --- | --- | --- |
| 106 | 1.1.5.2 | **Visual Design** | 1.75d | 2015-03-12 09:00 A | 2015-03-13 16:00 A |  | 100% |  | 20h | 20h |
| 107 | 1.1.5.2.1 | Elaborar Tela Inicial | 12h | 2015-03-12 09:00 A | 2015-03-13 14:00 A | 89 | 100% | Ricardo | 12h | 12h |
| 108 | 1.1.5.2.2 | Elaborar Tela de Login | 2h | 2015-03-12 09:00 A | 2015-03-12 11:00 A | 89 | 100% | Ricardo | 2h | 2h |
| 109 | 1.1.5.2.3 | Revisão do Visual Design | 2h | 2015-03-13 14:00 A | 2015-03-13 16:00 A | 108, 107 | 100% | Eduardo; Emanuel | 4h | 4h |
| 110 | 1.1.5.2.4 | Ajustes após revisão | 2h | 2015-03-12 11:00 A | 2015-03-12 14:00 A | 108 | 100% | Ricardo | 2h | 2h |
| 111 | 1.1.5.3 | **Diagrama de casos de uso** | 1d | 2015-03-24 12:00 A | 2015-03-25 12:00 A |  | 100% |  | 8h | 8h |
| 112 | 1.1.5.3.1 | Elaborar | 5h | 2015-03-24 12:00 A | 2015-03-24 18:00 A | 97 | 100% | Eduardo; Emanuel | 5h | 5h |
| 113 | 1.1.5.3.2 | Revisar | 1h | 2015-03-25 09:00 A | 2015-03-25 10:00 A | 112 | 100% | Emanuel | 1h | 1h |
| 114 | 1.1.5.3.3 | Ajustes após revisão | 2h | 2015-03-25 10:00 A | 2015-03-25 12:00 A | 113 | 100% | Eduardo | 2h | 2h |
| 115 | 1.1.5.4 | **Casos de uso** | 2.38d | 2015-03-25 10:00 A | 2015-03-27 14:00 A |  | 100% |  | 30h | 30h |
| 116 | 1.1.5.4.1 | Especificar | 15h | 2015-03-25 10:00 A | 2015-03-26 18:00 A | 113 | 100% | Emanuel; Eduardo | 26h | 26h |
| 117 | 1.1.5.4.2 | Revisar | 2h | 2015-03-27 09:00 A | 2015-03-27 11:00 A | 116 | 100% | Eduardo | 2h | 2h |
| 118 | 1.1.5.4.3 | Ajustes após revisão | 2h | 2015-03-27 11:00 A | 2015-03-27 14:00 A | 117 | 100% | Emanuel | 2h | 2h |
| 119 | 1.1.6 | **Posto Graduação** | 12.38d | 2015-03-12 11:00 A | 2015-03-30 15:00 A |  | 100% |  | 99h | 99h |
| 120 | 1.1.6.1 | **Protóripos de tela** | 4.5d | 2015-03-18 17:00 A | 2015-03-25 12:00 A |  | 100% |  | 28h | 28h |
| 121 | 1.1.6.1.1 | Elaborar | 12h | 2015-03-18 17:00 A | 2015-03-20 12:00 A | 46, 23, 103 | 100% | Eduardo; Emanuel | 23h | 23h |
| 122 | 1.1.6.1.2 | Revisar | 2h | 2015-03-20 13:00 A | 2015-03-23 17:00 A | 121 | 100% | Emanuel | 2h | 2h |
| 123 | 1.1.6.1.3 | Ajustes após revisão | 3h | 2015-03-23 17:00 A | 2015-03-25 12:00 A | 122 | 100% | Eduardo | 3h | 3h |
| 124 | 1.1.6.2 | **Visual Design consulta e cadastro de aplicação** | 3.25d | 2015-03-12 11:00 A | 2015-03-17 14:00 A |  | 100% |  | 26h | 26h |
| 125 | 1.1.6.2.1 | Elaborar | 14h | 2015-03-12 11:00 A | 2015-03-13 18:00 A | 108 | 100% | Ricardo | 14h | 14h |
| 126 | 1.1.6.2.2 | Revisar | 5h | 2015-03-16 09:00 A | 2015-03-16 15:00 A | 125 | 100% | Eduardo; Emanuel | 10h | 10h |
| 127 | 1.1.6.2.3 | Ajustes após revisão | 2h | 2015-03-16 15:00 A | 2015-03-17 14:00 A | 126 | 100% | Ricardo | 2h | 2h |
| 128 | 1.1.6.3 | **Diagrama de casos de uso** | 1.25d | 2015-03-25 09:00 A | 2015-03-26 11:00 A |  | 100% |  | 11h | 11h |
| 129 | 1.1.6.3.1 | Elaborar | 4h | 2015-03-25 09:00 A | 2015-03-25 14:00 A | 112 | 100% | Emanuel; Eduardo | 7h | 7h |
| 130 | 1.1.6.3.2 | Revisar | 2h | 2015-03-25 14:00 A | 2015-03-25 18:00 A | 129 | 100% | Eduardo | 2h | 2h |
| 131 | 1.1.6.3.3 | Ajustes após revisão | 2h | 2015-03-26 09:00 A | 2015-03-26 11:00 A | 130 | 100% | Emanuel | 2h | 2h |

| ID | WBS | Task | Type | Duration | Start | Finish | Predecessors | Complete | Resources | Work | Actual work |
| --- | --- | --- | --- | --- | --- | --- | --- | --- | --- | --- | --- |
| 132 | 1.1.6.4 | **Casos de uso** |  | 2.62d | 2015-03-26 09:00 A | 2015-03-30 15:00 A |  | 100% |  | 34h | 34h |
| 133 | 1.1.6.4.1 | Especificar |  | 16h | 2015-03-26 09:00 A | 2015-03-27 18:00 A | 130 | 100% | Emanuel; Eduardo | 29h | 29h |
| 134 | 1.1.6.4.2 | Revisar |  | 3h | 2015-03-30 09:00 A | 2015-03-30 12:00 A | 133 | 100% | Eduardo | 3h | 3h |
| 135 | 1.1.6.4.3 | Ajustes após revisão |  | 2h | 2015-03-30 13:00 A | 2015-03-30 15:00 A | 134 | 100% | Emanuel | 2h | 2h |
| 136 | 1.1.7 | **Elemento Organizacional** |  | 13.5d | 2015-03-16 09:00 A | 2015-04-02 14:00 A |  | 100% |  | 82h | 82h |
| 137 | 1.1.7.1 | **Protóripos de tela** |  | 1.38d | 2015-03-17 15:00 A | 2015-03-18 18:00 A |  | 100% |  | 18h | 18h |
| 138 | 1.1.7.1.1 | Elaborar |  | 8h | 2015-03-17 15:00 A | 2015-03-18 15:00 A | 46, 23, 104 | 100% | Eduardo; Emanuel | 15h | 15h |
| 139 | 1.1.7.1.2 | Revisar |  | 1h | 2015-03-18 15:00 A | 2015-03-18 16:00 A | 138 | 100% | Emanuel | 1h | 1h |
| 140 | 1.1.7.1.3 | Ajustes após revisão |  | 2h | 2015-03-18 16:00 A | 2015-03-18 18:00 A | 139 | 100% | Eduardo | 2h | 2h |
| 141 | 1.1.7.2 | **Visual Design consulta e cadastro de aplicação** |  | 3.12d | 2015-03-16 09:00 A | 2015-03-19 10:00 A |  | 100% |  | 25h | 25h |
| 142 | 1.1.7.2.1 | Elaborar |  | 14h | 2015-03-16 09:00 A | 2015-03-17 16:00 A | 125 | 100% | Ricardo | 14h | 14h |
| 143 | 1.1.7.2.2 | Revisar |  | 5h | 2015-03-17 16:00 A | 2015-03-18 16:00 A | 142 | 100% | Eduardo; Emanuel | 10h | 10h |
| 144 | 1.1.7.2.3 | Ajustes após revisão |  | 1h | 2015-03-18 16:00 A | 2015-03-19 10:00 A | 143 | 100% | Ricardo | 1h | 1h |
| 145 | 1.1.7.3 | **Diagrama de casos de uso** |  | 1.75d | 2015-03-25 14:00 A | 2015-03-27 11:00 A |  | 100% |  | 11h | 11h |
| 146 | 1.1.7.3.1 | Elaborar |  | 4h | 2015-03-25 14:00 A | 2015-03-26 11:00 A | 129 | 100% | Emanuel; Eduardo | 7h | 7h |
| 147 | 1.1.7.3.2 | Revisar |  | 2h | 2015-03-26 11:00 A | 2015-03-26 18:00 A | 146 | 100% | Eduardo | 2h | 2h |
| 148 | 1.1.7.3.3 | Ajustes após revisão |  | 2h | 2015-03-27 09:00 A | 2015-03-27 11:00 A | 147 | 100% | Emanuel | 2h | 2h |
| 149 | 1.1.7.4 | **Casos de uso** |  | 4.5d | 2015-03-27 09:00 A | 2015-04-02 14:00 A |  | 100% |  | 28h | 28h |
| 150 | 1.1.7.4.1 | Especificar |  | 14h | 2015-03-27 09:00 A | 2015-03-30 16:00 A | 147 | 100% | Emanuel; Eduardo | 23h | 23h |
| 151 | 1.1.7.4.2 | Revisar |  | 3h | 2015-03-30 16:00 A | 2015-04-02 11:00 A | 150 | 100% | Eduardo | 3h | 3h |
| 152 | 1.1.7.4.3 | Ajustes após revisão |  | 2h | 2015-04-02 11:00 A | 2015-04-02 14:00 A | 151 | 100% | Emanuel | 2h | 2h |
| 153 | 1.2 | FIM | milestone | 0d | 2015-04-28 12:00 A | 2015-04-28 12:00 A | 2 | 100% |  |  |  |
